# 开办新公司

Schedule from MS Project, 2018-01-08 to 2018-06-28.

## Calendars

- 标准: Mon-Fri 08:00-12:00, 13:00-17:00; Sat-Sun off.

## Resources

| Resource |
| --- |
| 商业顾问 |
| 同行 |
| 律师 |
| 政府部门 |
| 经理 |
| 业主 |
| 会计 |
| 银行家 |
| 信息服务 |

## Schedule

| ID | WBS | Task | Type | Duration | Start | Finish | Predecessors | Total slack | Free slack | Resources | Work |
| --- | --- | --- | --- | --- | --- | --- | --- | --- | --- | --- | --- |
| 1 | 1 | **第一阶段: 制定战略计划** |  | 23d | 2018-01-08 | 2018-02-07 |  | 0d |  |  | 240h |
| 2 | 1.1 | **自我评估** |  | 3d | 2018-01-08 | 2018-01-10 |  | 0d |  |  | 32h |
| 3 | 1.1.1 | 定义业务构想 |  | 1d | 2018-01-08 | 2018-01-08 |  | 0d |  | 经理 | 8h |
| 4 | 1.1.2 | 确定可供使用的技能、信息和支持 |  | 1d | 2018-01-09 | 2018-01-09 | 3 | 0d |  | 商业顾问; 经理 | 16h |
| 5 | 1.1.3 | 决定是否继续进行 |  | 1d | 2018-01-10 | 2018-01-10 | 4 | 0d |  | 经理 | 8h |
| 6 | 1.2 | **定义机会** |  | 10d | 2018-01-11 | 2018-01-24 |  | 0d |  |  | 96h |
| 7 | 1.2.1 | 进行市场和竞争情况调研 |  | 1d | 2018-01-11 | 2018-01-11 | 5 | 0d |  | 商业顾问 | 8h |
| 8 | 1.2.2 | 拜访类似业务的经营者 |  | 5d | 2018-01-12 | 2018-01-18 | 7 | 0d |  | 业主 | 40h |
| 9 | 1.2.3 | 确定所需的资源 |  | 2d | 2018-01-19 | 2018-01-22 | 8 | 0d |  | 商业顾问; 同行 | 32h |
| 10 | 1.2.4 | 确定经营成本的构成要素 |  | 2d | 2018-01-23 | 2018-01-24 | 9 | 0d |  | 会计 | 16h |
| 11 | 1.3 | **评估开展新业务的途径** |  | 4d | 2018-01-25 | 2018-01-30 |  | 0d |  |  | 32h |
| 12 | 1.3.1 | 定义对新实体的需求 |  | 1d | 2018-01-25 | 2018-01-25 | 10 | 0d |  | 经理 | 8h |
| 13 | 1.3.2 | 确定未来的业务并购机会 |  | 1d | 2018-01-26 | 2018-01-26 | 12 | 0d |  | 经理 | 8h |
| 14 | 1.3.3 | 研究特许经营的可能性 |  | 1d | 2018-01-29 | 2018-01-29 | 13 | 0d |  | 经理 | 8h |
| 15 | 1.3.4 | 总结开展新业务的途径 |  | 1d | 2018-01-30 | 2018-01-30 | 14 | 0d |  | 经理 | 8h |
| 16 | 1.4 | **评估潜在风险和回报** |  | 7d | 2018-01-26 | 2018-02-05 |  | 3d |  |  | 80h |
| 17 | 1.4.1 | 评估市场规模和稳定性 |  | 2d | 2018-01-26 | 2018-01-29 | 12 | 104d | 0d | 商业顾问 | 16h |
| 18 | 1.4.2 | 估计竞争情况 |  | 1d | 2018-01-30 | 2018-01-30 | 17 | 104d | 0d | 商业顾问 | 8h |
| 19 | 1.4.3 | 评估得到所需资源的可能性 |  | 2d | 2018-01-31 | 2018-02-01 | 18 | 104d | 0d | 商业顾问 | 16h |
| 20 | 1.4.4 | 评估能够实现的初始市场份额 |  | 1d | 2018-02-02 | 2018-02-02 | 19 | 104d |  | 商业顾问 | 8h |
| 21 | 1.4.5 | 确定财务方面的需求 |  | 2d | 2018-01-31 | 2018-02-01 | 15 | 0d |  | 商业顾问 | 16h |
| 22 | 1.4.6 | 审查个人是否适合这项工作 |  | 1d | 2018-02-02 | 2018-02-02 | 21 | 0d |  | 经理 | 8h |
| 23 | 1.4.7 | 评估初期的盈利能力 |  | 1d | 2018-02-05 | 2018-02-05 | 22 | 0d |  | 经理 | 8h |
| 24 | 1.5 | 审阅并修改战略计划 |  | 2d | 2018-02-06 | 2018-02-07 | 23 | 0d |  |  |  |
| 25 | 1.6 | 确认要付诸实施的决定 | milestone | 0d | 2018-02-07 | 2018-02-07 | 24 | 0d |  |  |  |

| ID | WBS | Task | Type | Duration | Start | Finish | Predecessors | Total slack | Resources | Work |
| --- | --- | --- | --- | --- | --- | --- | --- | --- | --- | --- |
| 26 | 2 | **第二阶段: 定义业务机会** |  | 27d | 2018-02-08 | 2018-03-16 |  | 0d |  | 208h |
| 27 | 2.1 | **定义市场** |  | 13d | 2018-02-08 | 2018-02-26 |  | 0d |  | 104h |
| 28 | 2.1.1 | 获取能够得到的信息 |  | 1d | 2018-02-08 | 2018-02-08 | 25 | 0d | 商业顾问 | 8h |
| 29 | 2.1.2 | 制定市场分析计划 |  | 2d | 2018-02-09 | 2018-02-12 | 28 | 0d | 商业顾问 | 16h |
| 30 | 2.1.3 | 实施市场分析计划 |  | 5d | 2018-02-13 | 2018-02-19 | 29 | 0d | 商业顾问 | 40h |
| 31 | 2.1.4 | 确定竞争情况 |  | 2d | 2018-02-20 | 2018-02-21 | 30 | 0d | 商业顾问 | 16h |
| 32 | 2.1.5 | 总结市场环境 |  | 2d | 2018-02-22 | 2018-02-23 | 31 | 0d | 商业顾问 | 16h |
| 33 | 2.1.6 | 确定目标市场定位 |  | 1d | 2018-02-26 | 2018-02-26 | 32 | 0d | 商业顾问 | 8h |
| 34 | 2.2 | **确定所需的材料和供应** |  | 7d | 2018-02-27 | 2018-03-07 |  | 0d |  | 56h |
| 35 | 2.2.1 | 选择一种开展业务的途径(从上面的“总结开展新业务的途径”) |  | 2d | 2018-02-27 | 2018-02-28 | 28SS, 33 | 0d | 经理 | 16h |
| 36 | 2.2.2 | 确定管理人员资源 |  | 1d | 2018-03-01 | 2018-03-01 | 35 | 0d | 经理 | 8h |
| 37 | 2.2.3 | 确定人员需求 |  | 1d | 2018-03-02 | 2018-03-02 | 36 | 0d | 经理 | 8h |
| 38 | 2.2.4 | 确定所需的原材料 |  | 1d | 2018-03-05 | 2018-03-05 | 37 | 0d | 经理 | 8h |
| 39 | 2.2.5 | 确定所需的工具 |  | 1d | 2018-03-06 | 2018-03-06 | 38 | 0d | 经理 | 8h |
| 40 | 2.2.6 | 总结经营开支和财务预测 |  | 1d | 2018-03-07 | 2018-03-07 | 39 | 0d | 经理 | 8h |
| 41 | 2.3 | **评估潜在风险和回报** |  | 6d | 2018-03-08 | 2018-03-15 |  | 0d |  | 48h |
| 42 | 2.3.1 | 评估市场规模和稳定性 |  | 2d | 2018-03-08 | 2018-03-09 | 40 | 0d | 经理 | 16h |
| 43 | 2.3.2 | 评估得到所需资源的可能性 |  | 2d | 2018-03-12 | 2018-03-13 | 42 | 0d | 经理 | 16h |
| 44 | 2.3.3 | 预测财务回报 |  | 2d | 2018-03-14 | 2018-03-15 | 43 | 0d | 会计 | 16h |
| 45 | 2.4 | 审阅并修改业务机会 |  | 1d | 2018-03-16 | 2018-03-16 | 44 | 0d |  |  |
| 46 | 2.5 | 确认要付诸实施的决定 | milestone | 0d | 2018-03-16 | 2018-03-16 | 45 | 0d | 商业顾问; 同行; 律师; 会计 |  |
| 47 | 3 | **第三阶段: 制定行动计划** |  | 21d | 2018-03-19 | 2018-04-16 |  | 0d |  | 184h |
| 48 | 3.1 | **制定详细的 5 年业务计划** |  | 21d | 2018-03-19 | 2018-04-16 |  | 0d |  | 184h |
| 49 | 3.1.1 | 描述构想和机会 |  | 1d | 2018-03-19 | 2018-03-19 | 46 | 0d | 商业顾问 | 8h |
| 50 | 3.1.2 | 列出假设条件 |  | 1d | 2018-03-20 | 2018-03-20 | 49 | 0d | 商业顾问 | 8h |
| 51 | 3.1.3 | 描述市场情况 |  | 1d | 2018-03-21 | 2018-03-21 | 50 | 0d | 商业顾问 | 8h |
| 52 | 3.1.4 | 描述新业务 |  | 1d | 2018-03-22 | 2018-03-22 | 51 | 0d | 商业顾问 | 8h |
| 53 | 3.1.5 | 描述优势、弱点、有利条件和威胁 |  | 1d | 2018-03-23 | 2018-03-23 | 52 | 0d | 商业顾问 | 8h |
| 54 | 3.1.6 | 估计启动阶段的销售量 |  | 1d | 2018-03-26 | 2018-03-26 | 53 | 0d | 商业顾问; 会计 | 16h |
| 55 | 3.1.7 | 预测经营费用 |  | 1d | 2018-03-27 | 2018-03-27 | 54 | 0d | 商业顾问; 会计 | 16h |
| 56 | 3.1.8 | 建立定价策略 |  | 1d | 2018-03-28 | 2018-03-28 | 55 | 0d | 商业顾问 | 8h |
| 57 | 3.1.9 | 预测年收入 |  | 1d | 2018-03-29 | 2018-03-29 | 56 | 0d | 商业顾问 | 8h |
| 58 | 3.1.10 | 总结预计的财务状况 |  | 2d | 2018-03-30 | 2018-04-02 | 57 | 0d | 商业顾问 | 16h |
| 59 | 3.1.11 | 进行收支平衡分析 |  | 1d | 2018-04-03 | 2018-04-03 | 58 | 0d | 商业顾问 | 8h |
| 60 | 3.1.12 | 制定现金流量预测 |  | 1d | 2018-04-04 | 2018-04-04 | 59 | 0d | 商业顾问 | 8h |
| 61 | 3.1.13 | 确定取得许可证和批准方面的要求 |  | 1d | 2018-04-05 | 2018-04-05 | 60 | 0d | 商业顾问 | 8h |
| 62 | 3.1.14 | 制定启动计划 |  | 2d | 2018-04-06 | 2018-04-09 | 61 | 0d | 商业顾问 | 16h |
| 63 | 3.1.15 | 制定销售和营销策略 |  | 1d | 2018-04-10 | 2018-04-10 | 62 | 0d | 商业顾问 | 8h |
| 64 | 3.1.16 | 确定产品分销网络的结构 |  | 1d | 2018-04-11 | 2018-04-11 | 63 | 0d | 商业顾问 | 8h |
| 65 | 3.1.17 | 描述风险和机遇 |  | 2d | 2018-04-12 | 2018-04-13 | 64 | 0d | 商业顾问 | 16h |
| 66 | 3.1.18 | 公布业务计划 |  | 1d | 2018-04-16 | 2018-04-16 | 65 | 0d | 商业顾问 | 8h |
| 67 | 3.1.19 | 确认要付诸实施的决定 | milestone | 0d | 2018-04-16 | 2018-04-16 | 66 | 0d | 商业顾问 |  |

| ID | WBS | Task | Type | Duration | Start | Finish | Predecessors | Total slack | Free slack | Resources | Work |
| --- | --- | --- | --- | --- | --- | --- | --- | --- | --- | --- | --- |
| 68 | 4 | **第四阶段: 实施启动计划** |  | 53d | 2018-04-17 | 2018-06-28 |  | 0d |  |  | 736h |
| 69 | 4.1 | 挑选营业场所 |  | 1d | 2018-04-17 | 2018-04-17 | 67 | 0d |  |  |  |
| 70 | 4.2 | **建立公司结构** |  | 24d | 2018-04-18 | 2018-05-21 |  | 0d |  |  | 296h |
| 71 | 4.2.1 | **确定公司名称** |  | 2d | 2018-04-18 | 2018-04-19 |  | 0d |  |  | 16h |
| 72 | 4.2.1.1 | 确定名称含义 |  | 1d | 2018-04-18 | 2018-04-18 | 69 | 0d |  | 律师 | 8h |
| 73 | 4.2.1.2 | 调查是否可以使用所选名称 |  | 1d | 2018-04-19 | 2018-04-19 | 72 | 0d |  | 律师 | 8h |
| 74 | 4.2.2 | **挑选开户银行** |  | 5d | 2018-04-20 | 2018-04-26 |  | 0d |  |  | 40h |
| 75 | 4.2.2.1 | 开户 |  | 4d | 2018-04-20 | 2018-04-25 | 73 | 0d |  | 银行家 | 32h |
| 76 | 4.2.2.2 | 确定信用贷款的最高限额 |  | 1d | 2018-04-26 | 2018-04-26 | 75 | 0d |  | 银行家 | 8h |
| 77 | 4.2.3 | 确定法人代表 |  | 1d | 2018-04-27 | 2018-04-27 | 75SS, 76 | 0d |  | 律师 | 8h |
| 78 | 4.2.4 | 选择公司的计税基础类别 |  | 2d | 2018-04-30 | 2018-05-01 | 77 | 0d |  | 律师; 会计 | 32h |
| 79 | 4.2.5 | 选择资金来源 |  | 2d | 2018-05-02 | 2018-05-03 | 78 | 0d |  | 经理 | 16h |
| 80 | 4.2.6 | 确定资金来源 | milestone | 0d | 2018-05-03 | 2018-05-03 | 79 | 13d | 0d | 经理 |  |
| 81 | 4.2.7 | **建立对经营进行控制的基础** |  | 12d | 2018-05-04 | 2018-05-21 |  | 13d |  |  | 144h |
| 82 | 4.2.7.1 | 选择并建立会计系统 |  | 2d | 2018-05-04 | 2018-05-07 | 79, 80 | 13d | 0d | 会计 | 16h |
| 83 | 4.2.7.2 | 获取必需的许可证和批准 |  | 4d | 2018-05-08 | 2018-05-11 | 82 | 13d | 0d | 律师; 政府部门 | 64h |
| 84 | 4.2.7.3 | 投保所需的险种 |  | 4d | 2018-05-14 | 2018-05-17 | 83 | 13d | 0d | 会计 | 32h |
| 85 | 4.2.7.4 | 制定安全计划 |  | 2d | 2018-05-18 | 2018-05-21 | 84 | 13d | 0d | 商业顾问; 律师 | 32h |
| 86 | 4.2.8 | **制定营销方案** |  | 4d | 2018-04-19 | 2018-04-24 |  | 32d |  |  | 40h |
| 87 | 4.2.8.1 | 制定广告方案 |  | 2d | 2018-04-19 | 2018-04-20 | 73SS | 32d | 0d | 商业顾问 | 16h |
| 88 | 4.2.8.2 | 设计徽标 |  | 1d | 2018-04-23 | 2018-04-23 | 87 | 32d | 0d | 商业顾问; 律师 | 16h |
| 89 | 4.2.8.3 | 定制产品促销材料 |  | 1d | 2018-04-24 | 2018-04-24 | 88 | 32d | 19d | 商业顾问 | 8h |
| 90 | 4.3 | **提供有形设施** |  | 15d | 2018-05-22 | 2018-06-11 |  | 13d |  |  | 120h |
| 91 | 4.3.1 | 确保营业场所的安全 |  | 5d | 2018-05-22 | 2018-05-28 | 85, 89 | 13d | 0d | 律师 | 40h |
| 92 | 4.3.2 | 选择计算机网络硬件 |  | 1d | 2018-05-29 | 2018-05-29 | 91 | 13d | 0d | 信息服务 | 8h |
| 93 | 4.3.3 | 选择计算机软件 |  | 1d | 2018-05-30 | 2018-05-30 | 92 | 13d | 0d | 信息服务 | 8h |
| 94 | 4.3.4 | 获得公用服务 |  | 3d | 2018-05-31 | 2018-06-04 | 93 | 13d | 0d | 经理 | 24h |
| 95 | 4.3.5 | 提供家具和设备 |  | 4d | 2018-06-05 | 2018-06-08 | 94 | 13d | 0d | 经理 | 32h |
| 96 | 4.3.6 | 进驻营业场所 |  | 1d | 2018-06-11 | 2018-06-11 | 95 | 13d |  | 经理 | 8h |

| ID | WBS | Task | Type | Duration | Start | Finish | Predecessors | Total slack | Resources | Work |
| --- | --- | --- | --- | --- | --- | --- | --- | --- | --- | --- |
| 97 | 4.4 | **招募员工** |  | 40d | 2018-05-04 | 2018-06-28 |  | 0d |  | 320h |
| 98 | 4.4.1 | 面试和测试应聘人员 |  | 14d | 2018-05-04 | 2018-05-23 | 79 | 0d | 经理 | 112h |
| 99 | 4.4.2 | 雇用员工 |  | 10d | 2018-05-24 | 2018-06-06 | 98 | 0d | 经理 | 80h |
| 100 | 4.4.3 | 培训员工 |  | 16d | 2018-06-07 | 2018-06-28 | 99 | 0d | 经理 | 128h |
| 101 | 4.5 | 公司开始运营 | milestone | 0d | 2018-06-28 | 2018-06-28 | 96, 100 | 0d | 经理 |  |
